How a schedule from MS Project changed from version to version. A marks actual dates.

## Version 1 (saved 2018-05-08, file GHN_Planification_Initiale.mpp)

Note of the change: Maquettes, scénarii et use case ajoutés

| ID | WBS | Task | Duration | Start | Finish | Predecessors | Total float |
| --- | --- | --- | --- | --- | --- | --- | --- |
| 1 | 1 | **Totalité du projet** | 12.86d | 2018-05-08 09:00 | 2018-06-06 11:40 |  | 0d |
| 2 |  | Rédaction de la Planification initiale | 2h | 2018-05-08 09:00 | 2018-05-08 11:20 |  | 0d |
| 3 | 1.2 | **Analyse** | 2.14d | 2018-05-08 11:20 | 2018-05-15 08:35 |  | 0d |
| 4 |  | Création des Use Cases | 2h | 2018-05-08 11:20 | 2018-05-08 14:40 | 2 | 0d |
| 5 |  | Création des maquettes | 4h | 2018-05-08 14:40 | 2018-05-09 10:30 | 4 | 0d |
| 6 |  | Création des scénarii | 4h | 2018-05-09 10:30 | 2018-05-14 10:00 | 5 | 0d |
| 7 |  | Création du Modèle Conceptuel de Données | 3h | 2018-05-14 10:00 | 2018-05-14 14:25 | 6 | 0d |
| 8 |  | Création de Modèle Logique de Données | 2h | 2018-05-14 14:25 | 2018-05-15 08:35 | 7 | 0d |
| 9 |  | Documentation de l'analyse | 5h | 2018-05-15 08:35 | 2018-05-15 15:35 | 8 | 0d |
| 10 | 1.4 | **Implémentation & tests** | 8.29d | 2018-05-15 15:35 | 2018-06-05 08:10 | 9 | 0d |
| 11 |  | Implémentation de l'interface graphique | 3h | 2018-05-15 15:35 | 2018-05-16 10:05 | 9 | 0d |
| 12 |  | Implémentation de la base de données | 2h | 2018-05-16 10:05 | 2018-05-16 12:05 | 11 | 0d |
| 13 |  | Implémentation de la classe de calcul avec des calculs simples | 4h | 2018-05-16 13:30 | 2018-05-17 11:35 | 12 | 0d |
| 14 |  | Tests de la classe de calcul | 2h | 2018-05-17 11:35 | 2018-05-17 15:00 | 13 | 0d |
| 15 |  | Implémentation du système d'entrée utilisateur | 6h | 2018-05-17 15:20 | 2018-05-22 14:10 | 14 | 0d |
| 16 |  | Tests du système d'entrés utilisateur | 3h | 2018-05-22 14:10 | 2018-05-23 08:40 | 15 | 0d |
| 17 |  | Implémentation des calculs avancés | 4h | 2018-05-23 08:40 | 2018-05-23 14:25 | 16 | 0d |
| 18 |  | Tests des calculs avancés | 2h | 2018-05-23 14:25 | 2018-05-24 10:30 | 17 | 0d |
| 19 |  | Implémentation de l'historique des opérations | 5h | 2018-05-24 10:30 | 2018-05-28 10:15 | 18 | 0d |
| 20 |  | Tests de l'historique des opérations | 2h | 2018-05-28 10:15 | 2018-05-28 13:40 | 19 | 0d |
| 21 |  | Implémentation de l'utilisation des constantes | 5h | 2018-05-28 13:40 | 2018-05-29 11:10 | 20 | 0d |
| 22 |  | Tests de l'utilisation des constantes | 1h | 2018-05-29 11:10 | 2018-05-29 12:10 | 21 | 0d |
| 23 |  | Implémentation de la conversion de base numérique | 3h | 2018-05-29 13:30 | 2018-05-29 16:50 | 22 | 0d |
| 24 |  | Tests de la conversion de base numérique | 1h | 2018-05-30 08:00 | 2018-05-30 09:00 | 23 | 0d |
| 25 |  | Implémentation de l'affichage d'un graphe | 7h | 2018-05-30 09:00 | 2018-05-31 11:50 | 24 | 0d |
| 26 |  | Tests de l'affichage de graphe | 2h | 2018-05-31 11:50 | 2018-05-31 15:35 | 25 | 0d |
| 27 |  | Implémentation de la modification des paramètres | 4h | 2018-05-31 15:35 | 2018-06-04 14:00 | 26 | 0d |
| 28 |  | Tests de la modification des paramètres | 1h | 2018-06-04 14:00 | 2018-06-04 15:00 | 27 | 0d |
| 29 |  | Tests d'acceptation | 1h | 2018-06-04 15:15 | 2018-06-05 08:10 | 28 | 0d |
| 30 |  | Documentation de la réalisation | 6h | 2018-06-05 08:10 | 2018-06-05 16:10 | 29, 28 | 0d |
| 31 |  | Documentation finale | 4h | 2018-06-05 16:10 | 2018-06-06 11:40 | 30 | 0d |

## Version 2 (saved 2018-05-09, file GHN_Planification_Continue.mpp)

Note of the change: Maquettes, scénarii et use case ajoutés

Last finish stays 2018-06-06. Complete tasks 0 → 4.

Changed:

| ID | Task | Start | Finish | Complete | Total float |
| --- | --- | --- | --- | --- | --- |
| 1 | **Totalité du projet** | 2018-05-08 09:00 A |  | 0% → 13% |  |
| 2 | Rédaction de la Planification initiale | 2018-05-08 09:00 A | 2018-05-08 11:20 A | 0% → 100% | 0d → none |
| 3 | **Analyse** | 2018-05-08 11:20 A |  | 0% → 67% |  |
| 4 | Création des Use Cases | 2018-05-08 11:20 A | 2018-05-08 14:40 A | 0% → 100% | 0d → none |
| 5 | Création des maquettes | 2018-05-08 14:40 A | 2018-05-09 10:30 A | 0% → 100% | 0d → none |
| 6 | Création des scénarii | 2018-05-09 10:30 A | 2018-05-14 10:00 A | 0% → 100% | 0d → none |

## Version 3 (saved 2018-05-14, file GHN_Planification_Initiale.mpp)

Note of the change: Documentation update

Last finish stays 2018-06-06. Complete tasks 4 → 0.

Added:

| ID | Task | Duration | Start | Finish |
| --- | --- | --- | --- | --- |
| 32 | Documentation continue | 90h | 2018-05-08 09:00 | 2018-06-06 11:40 |

Changed:

| ID | Task | Start | Finish | Duration | Complete | Total float | Predecessors |
| --- | --- | --- | --- | --- | --- | --- | --- |
| 1 | **Totalité du projet** | 2018-05-08 09:00 A → 2018-05-08 09:00 |  | 12.86d → 90h | 13% → 0% | 0d → none |  |
| 2 | Rédaction de la Planification initiale | 2018-05-08 09:00 A → 2018-05-08 09:00 | 2018-05-08 11:20 A → 2018-05-08 11:20 |  | 100% → 0% | none → 0d |  |
| 3 | **Analyse** | 2018-05-08 11:20 A → 2018-05-08 11:20 |  |  | 67% → 0% |  |  |
| 4 | Création des Use Cases | 2018-05-08 11:20 A → 2018-05-08 11:20 | 2018-05-08 14:40 A → 2018-05-08 14:40 |  | 100% → 0% | none → 0d |  |
| 5 | Création des maquettes | 2018-05-08 14:40 A → 2018-05-08 14:40 | 2018-05-09 10:30 A → 2018-05-09 10:30 |  | 100% → 0% | none → 0d |  |
| 6 | Création des scénarii | 2018-05-09 10:30 A → 2018-05-09 10:30 | 2018-05-14 10:00 A → 2018-05-14 10:00 |  | 100% → 0% | none → 0d |  |
| 10 | **Implémentation & tests** |  |  |  |  |  | 9 → none |
| 30 | Documentation de la réalisation |  | 2018-06-05 16:10 → 2018-06-05 14:50 | 6h → 5h |  |  | 29, 28 → 29 |
| 31 | Documentation finale | 2018-06-05 16:10 → 2018-06-05 14:50 |  | 4h → 5h |  |  |  |

## Version 4 (saved 2018-05-14, file GHN_Planification_Continue.mpp)

Note of the change: Documentation update

Last finish stays 2018-06-06. Complete tasks 0 → 3.

Changed:

| ID | Task | Start | Finish | Duration | Complete | Total float |
| --- | --- | --- | --- | --- | --- | --- |
| 1 | **Totalité du projet** | 2018-05-08 09:00 A |  | 90h → 12.86d | 0% → 8% | none → 0d |
| 2 | Rédaction de la Planification initiale | 2018-05-08 09:00 A | 2018-05-08 11:20 A |  | 0% → 100% | 0d → none |
| 3 | **Analyse** | 2018-05-08 11:20 A |  |  | 0% → 76% | 0d → 10.43d |
| 4 | Création des Use Cases | 2018-05-08 11:20 A | 2018-05-08 14:40 A |  | 0% → 100% | 0d → none |
| 5 | Création des maquettes | 2018-05-08 14:40 A |  |  | 0% → 96% | 0d → 11.71d |
| 6 | Création des scénarii | 2018-05-09 10:30 A | 2018-05-14 10:00 A |  | 0% → 100% | 0d → none |
| 7 | Création du Modèle Conceptuel de Données | 2018-05-14 10:00 A |  |  | 0% → 33% | 0d → 0.14d |
| 8 | Création de Modèle Logique de Données | 2018-05-14 14:25 A |  |  | 0% → 25% | 0d → 0.11d |
| 9 | Documentation de l'analyse | 2018-05-15 08:35 A |  |  | 0% → 15% |  |
| 32 | Documentation continue | 2018-05-08 09:00 A |  |  |  |  |

## Version 5 (saved 2018-05-15, file GHN_Planification_Continue.mpp)

Note of the change: 15.05 commit for the experts

Last finish stays 2018-06-06. Complete tasks 3 → 4.

Added:

| ID | Task | Duration | Start | Finish | Predecessors |
| --- | --- | --- | --- | --- | --- |
| 11 | Implémentation des classes et des méthodes vides | 0h | 2018-05-15 15:00 | 2018-05-15 15:00 | 9 |

Changed:

| ID | Task | Start | Finish | Duration | Complete | Total float | Predecessors | Other |
| --- | --- | --- | --- | --- | --- | --- | --- | --- |
| 1 | **Totalité du projet** |  |  | 12.86d → 12.86d? | 8% → 11% |  |  |  |
| 3 | **Analyse** |  | 2018-05-15 08:35 → 2018-05-14 15:25 (-1d) | 2.14d → 1.96d | 76% → 88% | 10.43d → 10.61d |  |  |
| 5 | Création des maquettes et de l'interface graphique essentielle |  | 2018-05-09 10:30 → 2018-05-09 11:00 | 4h → 4.5h | 96% → 85% | 11.71d → 0.5d |  | was named Création des maquettes |
| 6 | Création des scénarii |  | 2018-05-14 10:00 A → 2018-05-14 11:00 | 4h → 5h | 100% → 80% | none → 11d |  |  |
| 7 | Création du Modèle Conceptuel de Données |  | 2018-05-14 14:25 → 2018-05-14 11:00 A | 3h → 1h | 33% → 100% | 0.14d → none |  |  |
| 8 | Création de Modèle Logique de Données |  | 2018-05-15 08:35 → 2018-05-14 15:25 A (-1d) | 2h → 0.75h | 25% → 100% | 0.11d → none |  |  |
| 9 | Documentation de l'analyse |  | 2018-05-15 15:35 → 2018-05-15 15:00 | 5h → 4.75h | 15% → 95% | 0d → 0.18d |  |  |
| 10 | **Implémentation & tests** | 2018-05-15 15:35 → 2018-05-15 15:00 A |  | 8.29d → 8.32d | 0% → 2% |  |  |  |
| 12 | Finalisation de l'interface graphique | 2018-05-15 15:35 → 2018-05-15 15:20 | 2018-05-16 10:05 → 2018-05-16 09:30 |  |  | 0d → 0.18d | 9 → 11, 9 | was named Implémentation de l'interface graphique |
| 13 | Implémentation de la base de données | 2018-05-16 10:05 → 2018-05-16 09:50 | 2018-05-16 12:05 → 2018-05-16 11:50 |  |  | 0d → 0.18d |  |  |
| 14 | Implémentation de la classe de calcul avec des calculs simples | 2018-05-16 13:30 A |  |  | 0% → 25% |  |  |  |
| 20 | Implémentation de l'historique des opérations |  | 2018-05-28 10:15 → 2018-05-24 16:15 (-4d) | 5h → 4h |  |  |  |  |
| 21 | Tests de l'historique des opérations | 2018-05-28 10:15 → 2018-05-24 16:15 (-4d) | 2018-05-28 13:40 → 2018-05-28 11:15 |  |  |  |  |  |
| 22 | Implémentation de l'utilisation des constantes | 2018-05-28 13:40 → 2018-05-28 11:15 | 2018-05-29 11:10 → 2018-05-29 10:10 |  |  |  |  |  |
| 23 | Tests de l'utilisation des constantes | 2018-05-29 11:10 → 2018-05-29 10:10 | 2018-05-29 12:10 → 2018-05-29 11:10 |  |  |  |  |  |
| 24 | Implémentation de la conversion de base numérique | 2018-05-29 13:30 → 2018-05-29 11:10 | 2018-05-29 16:50 → 2018-05-29 15:50 |  |  |  |  |  |
| 25 | Tests de la conversion de base numérique | 2018-05-30 08:00 → 2018-05-29 15:50 (-1d) | 2018-05-30 09:00 → 2018-05-29 16:50 (-1d) |  |  |  |  |  |
| 26 | Implémentation de l'affichage d'un graphe | 2018-05-30 09:00 → 2018-05-30 08:00 | 2018-05-31 11:50 → 2018-05-30 16:05 (-1d) | 7h → 6h |  |  |  |  |
| 27 | Tests de l'affichage de graphe | 2018-05-31 11:50 → 2018-05-31 09:50 | 2018-05-31 15:35 → 2018-05-31 11:50 |  |  |  |  |  |
| 28 | Implémentation de la modification des paramètres | 2018-05-31 15:35 → 2018-05-31 11:50 | 2018-06-04 14:00 → 2018-06-04 10:35 |  |  |  |  |  |
| 29 | Tests de la modification des paramètres | 2018-06-04 14:00 → 2018-06-04 10:35 | 2018-06-04 15:00 → 2018-06-04 11:35 |  |  |  |  |  |
| 30 | Modifications selon les tests client | 2018-06-04 15:15 → 2018-06-04 11:35 |  | 1h → 3h |  |  |  | was named Tests d'acceptation |

## Version 6 (saved 2018-05-16, file GHN_Planification_Initiale.mpp)

Note of the change: Adding new class diagram and basic input functions

Last finish stays 2018-06-06. Complete tasks 4 → 0.

Removed: 11 Implémentation des classes et des méthodes vides

Changed:

| ID | Task | Start | Finish | Duration | Complete | Total float | Predecessors | Other |
| --- | --- | --- | --- | --- | --- | --- | --- | --- |
| 1 | **Totalité du projet** | 2018-05-08 09:00 A → 2018-05-08 09:00 |  | 12.86d? → 90h | 11% → 0% | 0d → none |  |  |
| 2 | Rédaction de la Planification initiale | 2018-05-08 09:00 A → 2018-05-08 09:00 | 2018-05-08 11:20 A → 2018-05-08 11:20 |  | 100% → 0% | none → 0d |  |  |
| 3 | **Analyse** | 2018-05-08 11:20 A → 2018-05-08 11:20 | 2018-05-14 15:25 → 2018-05-15 08:35 (+1d) | 1.96d → 2.14d | 88% → 0% | 10.61d → 0d |  |  |
| 4 | Création des Use Cases | 2018-05-08 11:20 A → 2018-05-08 11:20 | 2018-05-08 14:40 A → 2018-05-08 14:40 |  | 100% → 0% | none → 0d |  |  |
| 5 | Création des maquettes | 2018-05-08 14:40 A → 2018-05-08 14:40 | 2018-05-09 11:00 → 2018-05-09 10:30 | 4.5h → 4h | 85% → 0% | 0.5d → 0d |  | was named Création des maquettes et de l'interface graphique essentielle |
| 6 | Création des scénarii | 2018-05-09 10:30 A → 2018-05-09 10:30 | 2018-05-14 11:00 → 2018-05-14 10:00 | 5h → 4h | 80% → 0% | 11d → 0d |  |  |
| 7 | Création du Modèle Conceptuel de Données | 2018-05-14 10:00 A → 2018-05-14 10:00 | 2018-05-14 11:00 A → 2018-05-14 14:25 | 1h → 3h | 100% → 0% | none → 0d |  |  |
| 8 | Création de Modèle Logique de Données | 2018-05-14 14:25 A → 2018-05-14 14:25 | 2018-05-14 15:25 A → 2018-05-15 08:35 (+1d) | 0.75h → 2h | 100% → 0% | none → 0d |  |  |
| 9 | Documentation de l'analyse | 2018-05-15 08:35 A → 2018-05-15 08:35 | 2018-05-15 15:00 → 2018-05-15 15:35 | 4.75h → 5h | 95% → 0% | 0.18d → 0d |  |  |
| 10 | **Implémentation & tests** | 2018-05-15 15:00 A → 2018-05-15 15:35 |  | 8.32d → 8.29d | 2% → 0% |  |  |  |
| 11 | Implémentation de l'interface graphique | 2018-05-15 15:20 → 2018-05-15 15:35 | 2018-05-16 09:30 → 2018-05-16 10:05 |  |  | 0.18d → 0d | Implémentation des classes et des méthodes vides, 9 → 9 | was named Finalisation de l'interface graphique |
| 12 | Implémentation de la base de données | 2018-05-16 09:50 → 2018-05-16 10:05 | 2018-05-16 11:50 → 2018-05-16 12:05 |  |  | 0.18d → 0d |  |  |
| 13 | Implémentation de la classe de calcul avec des calculs simples | 2018-05-16 13:30 A → 2018-05-16 13:30 |  |  | 25% → 0% |  |  |  |
| 19 | Implémentation de l'historique des opérations |  | 2018-05-24 16:15 → 2018-05-28 10:15 (+4d) | 4h → 5h |  |  |  |  |
| 20 | Tests de l'historique des opérations | 2018-05-24 16:15 → 2018-05-28 10:15 (+4d) | 2018-05-28 11:15 → 2018-05-28 13:40 |  |  |  |  |  |
| 21 | Implémentation de l'utilisation des constantes | 2018-05-28 11:15 → 2018-05-28 13:40 | 2018-05-29 10:10 → 2018-05-29 11:10 |  |  |  |  |  |
| 22 | Tests de l'utilisation des constantes | 2018-05-29 10:10 → 2018-05-29 11:10 | 2018-05-29 11:10 → 2018-05-29 12:10 |  |  |  |  |  |
| 23 | Implémentation de la conversion de base numérique | 2018-05-29 11:10 → 2018-05-29 13:30 | 2018-05-29 15:50 → 2018-05-29 16:50 |  |  |  |  |  |
| 24 | Tests de la conversion de base numérique | 2018-05-29 15:50 → 2018-05-30 08:00 (+1d) | 2018-05-29 16:50 → 2018-05-30 09:00 (+1d) |  |  |  |  |  |
| 25 | Implémentation de l'affichage d'un graphe | 2018-05-30 08:00 → 2018-05-30 09:00 | 2018-05-30 16:05 → 2018-05-31 11:50 (+1d) | 6h → 7h |  |  |  |  |
| 26 | Tests de l'affichage de graphe | 2018-05-31 09:50 → 2018-05-31 11:50 | 2018-05-31 11:50 → 2018-05-31 15:35 |  |  |  |  |  |
| 27 | Implémentation de la modification des paramètres | 2018-05-31 11:50 → 2018-05-31 15:35 | 2018-06-04 10:35 → 2018-06-04 14:00 |  |  |  |  |  |
| 28 | Tests de la modification des paramètres | 2018-06-04 10:35 → 2018-06-04 14:00 | 2018-06-04 11:35 → 2018-06-04 15:00 |  |  |  |  |  |
| 29 | Tests d'acceptation | 2018-06-04 11:35 → 2018-06-04 15:15 |  | 3h → 1h |  |  |  | was named Modifications selon les tests client |
| 32 | Documentation continue | 2018-05-08 09:00 A → 2018-05-08 09:00 |  |  |  |  |  |  |

## Version 7 (saved 2018-05-16, file GHN_Planification_Continue.mpp)

Note of the change: Adding new class diagram and basic input functions

Last finish stays 2018-06-06. Complete tasks 0 → 4.

Added:

| ID | Task | Duration | Start | Finish | Predecessors |
| --- | --- | --- | --- | --- | --- |
| 11 | Implémentation des classes et des méthodes vides | 2.25h | 2018-05-15 15:50 | 2018-05-16 09:15 | 9 |
| 13 | Implémentation de la saisie de l'utilisateur | 0.5h | 2018-05-08 09:00 | 2018-05-08 09:30 |  |

Removed: 11 Implémentation de l'interface graphique

Changed:

| ID | Task | Start | Finish | Duration | Complete | Total float | Predecessors | Other |
| --- | --- | --- | --- | --- | --- | --- | --- | --- |
| 1 | **Totalité du projet** | 2018-05-08 09:00 A |  | 90h → 12.86d? | 0% → 11% | none → 0d |  |  |
| 2 | Rédaction de la Planification initiale | 2018-05-08 09:00 A | 2018-05-08 11:20 A |  | 0% → 100% | 0d → none |  |  |
| 3 | **Analyse** | 2018-05-08 11:20 A | 2018-05-15 08:35 → 2018-05-14 15:25 (-1d) | 2.14d → 1.96d | 0% → 88% | 0d → 10.61d |  |  |
| 4 | Création des Use Cases | 2018-05-08 11:20 A | 2018-05-08 14:40 A |  | 0% → 100% | 0d → none |  |  |
| 5 | Création des maquettes et de l'interface graphique essentielle | 2018-05-08 14:40 A | 2018-05-09 10:30 → 2018-05-09 11:00 | 4h → 4.5h | 0% → 85% | 0d → 0.5d |  | was named Création des maquettes |
| 6 | Création des scénarii | 2018-05-09 10:30 A | 2018-05-14 10:00 → 2018-05-14 11:00 | 4h → 5h | 0% → 80% | 0d → 11d |  |  |
| 7 | Création du Modèle Conceptuel de Données | 2018-05-14 10:00 A | 2018-05-14 14:25 → 2018-05-14 11:00 A | 3h → 1h | 0% → 100% | 0d → none |  |  |
| 8 | Création de Modèle Logique de Données | 2018-05-14 14:25 A | 2018-05-15 08:35 → 2018-05-14 15:25 A (-1d) | 2h → 0.75h | 0% → 100% | 0d → none |  |  |
| 9 | Documentation de l'analyse | 2018-05-15 08:35 A | 2018-05-15 15:35 → 2018-05-15 15:50 | 5h → 5.25h | 0% → 86% | 0d → 0.36d |  |  |
| 10 | **Implémentation & tests** | 2018-05-15 15:35 → 2018-05-08 09:00 A (-7d) |  | 8.29d → 11.43d | 0% → 2% | 0d → 1.43d |  |  |
| 12 | Implémentation de la base de données | 2018-05-16 10:05 → 2018-05-16 09:15 | 2018-05-16 12:05 → 2018-05-16 10:35 | 2h → 1h |  | 0d → 0.36d | Implémentation de l'interface graphique → 11 |  |
| 14 | Implémentation de la classe de calcul avec des calculs simples | 2018-05-16 13:30 A |  |  | 0% → 25% |  |  |  |
| 20 | Implémentation de l'historique des opérations |  | 2018-05-28 10:15 → 2018-05-24 16:15 (-4d) | 5h → 4h |  |  |  |  |
| 21 | Tests de l'historique des opérations | 2018-05-28 10:15 → 2018-05-24 16:15 (-4d) | 2018-05-28 13:40 → 2018-05-28 11:15 |  |  |  |  |  |
| 22 | Implémentation de l'utilisation des constantes | 2018-05-28 13:40 → 2018-05-28 11:15 | 2018-05-29 11:10 → 2018-05-29 10:10 |  |  |  |  |  |
| 23 | Tests de l'utilisation des constantes | 2018-05-29 11:10 → 2018-05-29 10:10 | 2018-05-29 12:10 → 2018-05-29 11:10 |  |  |  |  |  |
| 24 | Implémentation de la conversion de base numérique | 2018-05-29 13:30 → 2018-05-29 11:10 | 2018-05-29 16:50 → 2018-05-29 15:50 |  |  |  |  |  |
| 25 | Tests de la conversion de base numérique | 2018-05-30 08:00 → 2018-05-29 15:50 (-1d) | 2018-05-30 09:00 → 2018-05-29 16:50 (-1d) |  |  |  |  |  |
| 26 | Implémentation de l'affichage d'un graphe | 2018-05-30 09:00 → 2018-05-30 08:00 | 2018-05-31 11:50 → 2018-05-30 16:05 (-1d) | 7h → 6h |  |  |  |  |
| 27 | Tests de l'affichage de graphe | 2018-05-31 11:50 → 2018-05-31 09:50 | 2018-05-31 15:35 → 2018-05-31 11:50 |  |  |  |  |  |
| 28 | Implémentation de la modification des paramètres | 2018-05-31 15:35 → 2018-05-31 11:50 | 2018-06-04 14:00 → 2018-06-04 10:35 |  |  |  |  |  |
| 29 | Tests de la modification des paramètres | 2018-06-04 14:00 → 2018-06-04 10:35 | 2018-06-04 15:00 → 2018-06-04 11:35 |  |  |  |  |  |
| 30 | Modifications selon les tests client | 2018-06-04 15:15 → 2018-06-04 11:35 |  | 1h → 3h |  |  |  | was named Tests d'acceptation |
| 33 | Documentation continue | 2018-05-08 09:00 A |  |  |  |  |  |  |

## Version 8 (saved 2018-05-17, file GHN_Planification_Continue.mpp)

Note of the change: Tests for calculations started.

Last finish stays 2018-06-06.

Changed:

| ID | Task | Start | Finish | Duration | Complete | Total float |
| --- | --- | --- | --- | --- | --- | --- |
| 3 | **Analyse** |  |  |  | 88% → 83% |  |
| 6 | Création des scénarii |  | 2018-05-14 11:00 → 2018-05-14 11:45 | 5h → 5.75h | 80% → 70% | 11d → 10.89d |
| 10 | **Implémentation & tests** |  | 2018-06-05 08:10 → 2018-05-31 11:35 (-5d) | 11.43d → 10.25d |  | 1.43d → 2.61d |
| 14 | Implémentation de la classe de calcul avec des calculs simples |  | 2018-05-17 11:35 → 2018-05-16 16:05 (-1d) | 4h → 2.25h | 25% → 44% | 0d → 0.25d |
| 15 | Tests de la classe de calcul | 2018-05-17 11:35 → 2018-05-17 09:50 | 2018-05-17 15:00 → 2018-05-17 11:20 | 2h → 1.5h |  | 0d → 1.18d |
| 16 | Implémentation du système d'entrée utilisateur | 2018-05-17 15:20 → 2018-05-17 11:20 | 2018-05-22 14:10 → 2018-05-17 11:20 (-5d) | 6h → 0h |  | 0d → 1.18d |
| 17 | Tests du système d'entrés utilisateur | 2018-05-22 14:10 → 2018-05-17 11:20 (-5d) | 2018-05-23 08:40 → 2018-05-17 16:05 (-6d) |  |  | 0d → 1.18d |
| 18 | Implémentation des calculs avancés | 2018-05-23 08:40 → 2018-05-17 16:05 (-6d) | 2018-05-23 14:25 → 2018-05-22 11:35 (-1d) |  |  | 0d → 1.18d |
| 19 | Tests des calculs avancés | 2018-05-23 14:25 → 2018-05-22 11:35 (-1d) | 2018-05-24 10:30 → 2018-05-22 14:55 (-2d) |  |  | 0d → 1.18d |
| 20 | Implémentation de l'historique des opérations | 2018-05-24 10:30 → 2018-05-22 14:55 (-2d) | 2018-05-24 16:15 → 2018-05-23 10:45 (-1d) |  |  | 0d → 1.18d |
| 21 | Tests de l'historique des opérations | 2018-05-24 16:15 → 2018-05-23 10:45 (-1d) | 2018-05-28 11:15 → 2018-05-23 14:10 (-5d) |  |  | 0d → 1.18d |
| 22 | Implémentation de l'utilisation des constantes | 2018-05-28 11:15 → 2018-05-23 14:10 (-5d) | 2018-05-29 10:10 → 2018-05-24 14:40 (-5d) |  |  | 0d → 1.18d |
| 23 | Tests de l'utilisation des constantes | 2018-05-29 10:10 → 2018-05-24 14:40 (-5d) | 2018-05-29 11:10 → 2018-05-24 16:00 (-5d) |  |  | 0d → 1.18d |
| 24 | Implémentation de la conversion de base numérique | 2018-05-29 11:10 → 2018-05-24 16:00 (-5d) | 2018-05-29 15:50 → 2018-05-28 12:00 (-1d) |  |  | 0d → 1.18d |
| 25 | Tests de la conversion de base numérique | 2018-05-29 15:50 → 2018-05-28 12:00 (-1d) | 2018-05-29 16:50 → 2018-05-28 14:25 (-1d) |  |  | 0d → 1.18d |
| 26 | Implémentation de l'affichage d'un graphe | 2018-05-30 08:00 → 2018-05-28 14:25 (-2d) | 2018-05-30 16:05 → 2018-05-29 14:15 (-1d) |  |  | 0d → 1.18d |
| 27 | Tests de l'affichage de graphe | 2018-05-31 09:50 → 2018-05-29 14:15 (-2d) | 2018-05-31 11:50 → 2018-05-29 16:35 (-2d) |  |  | 0d → 1.18d |
| 28 | Implémentation de la modification des paramètres | 2018-05-31 11:50 → 2018-05-29 16:35 (-2d) | 2018-06-04 10:35 → 2018-05-30 12:05 (-5d) |  |  | 0d → 1.18d |
| 29 | Tests de la modification des paramètres | 2018-06-04 10:35 → 2018-05-30 13:30 (-5d) | 2018-06-04 11:35 → 2018-05-30 14:30 (-5d) |  |  | 0d → 1.18d |
| 30 | Modifications selon les tests client | 2018-06-04 11:35 → 2018-05-30 14:30 (-5d) | 2018-06-05 08:10 → 2018-05-31 11:35 (-5d) |  |  | 0d → 1.18d |
| 31 | Documentation de la réalisation | 2018-06-05 08:10 → 2018-05-31 11:35 (-5d) | 2018-06-05 14:50 → 2018-06-04 11:20 (-1d) |  |  | 0d → 1.18d |
| 32 | Documentation finale | 2018-06-05 14:50 → 2018-06-04 11:20 (-1d) | 2018-06-06 11:40 → 2018-06-05 10:15 (-1d) |  |  | 0d → 1.18d |

## Version 9 (saved 2018-05-22, file GHN_Planification_Continue.mpp)

Note of the change: All basic operations tested and functional

Last finish stays 2018-06-06.

Removed: 16 Implémentation du système d'entrée utilisateur; 17 Tests du système d'entrés utilisateur

Changed:

| ID | Task | Start | Finish | Duration | Complete | Total float | Predecessors | Other |
| --- | --- | --- | --- | --- | --- | --- | --- | --- |
| 1 | **Totalité du projet** |  |  |  | 11% → 12% |  |  |  |
| 10 | **Implémentation & tests** | 2018-05-08 09:00 A → 2018-05-15 15:50 A (+7d) | 2018-05-31 11:35 → 2018-05-30 08:15 (-1d) | 10.25d → 6d |  | 2.61d → 2.25d |  |  |
| 13 | Implémentation et tests de la saisie de l'utilisateur | 2018-05-08 09:00 → 2018-05-16 10:35 (+8d) | 2018-05-08 09:30 → 2018-05-16 11:05 (+8d) |  |  | 12.79d → 0.29d | none → 12 | was named Implémentation de la saisie de l'utilisateur |
| 14 | Implémentation de la classe de calcul avec des calculs simples |  | 2018-05-16 16:05 → 2018-05-17 10:20 (+1d) | 2.25h → 2.75h | 44% → 36% | 0.25d → 2.25d | 12 → 13 |  |
| 15 | Tests de la classe de calcul | 2018-05-17 09:50 → 2018-05-17 10:20 | 2018-05-17 11:20 → 2018-05-17 14:15 | 1.5h → 2.5h |  | 1.18d → 0.96d |  |  |
| 16 | Implémentation des calculs avancés | 2018-05-17 16:05 → 2018-05-17 14:15 | 2018-05-22 11:35 → 2018-05-17 14:15 (-5d) | 4h → 0h |  | 1.18d → 2.25d | Tests du système d'entrés utilisateur → 15 |  |
| 17 | Tests des calculs avancés | 2018-05-22 11:35 → 2018-05-17 14:15 (-5d) | 2018-05-22 14:55 → 2018-05-17 14:15 (-5d) | 2h → 0h |  | 1.18d → 2.25d |  |  |
| 18 | Implémentation de l'historique des opérations | 2018-05-22 14:55 → 2018-05-17 14:15 (-5d) | 2018-05-23 10:45 → 2018-05-22 10:05 (-1d) |  |  | 1.18d → 2.25d |  |  |
| 19 | Tests de l'historique des opérations | 2018-05-23 10:45 → 2018-05-22 10:05 (-1d) | 2018-05-23 14:10 → 2018-05-22 12:05 (-1d) |  |  | 1.18d → 2.25d |  |  |
| 20 | Implémentation de l'utilisation des constantes | 2018-05-23 14:10 → 2018-05-22 12:05 (-1d) | 2018-05-24 14:40 → 2018-05-23 10:15 (-1d) |  |  | 1.18d → 2.25d |  |  |
| 21 | Tests de l'utilisation des constantes | 2018-05-24 14:40 → 2018-05-23 10:15 (-1d) | 2018-05-24 16:00 → 2018-05-23 11:15 (-1d) |  |  | 1.18d → 2.25d |  |  |
| 22 | Implémentation de la conversion de base numérique | 2018-05-24 16:00 → 2018-05-23 11:15 (-1d) | 2018-05-28 12:00 → 2018-05-23 16:00 (-5d) |  |  | 1.18d → 2.25d |  |  |
| 23 | Tests de la conversion de base numérique | 2018-05-28 12:00 → 2018-05-23 16:00 (-5d) | 2018-05-28 14:25 → 2018-05-24 10:45 (-4d) |  |  | 1.18d → 2.25d |  |  |
| 24 | Implémentation de l'affichage d'un graphe | 2018-05-28 14:25 → 2018-05-24 10:45 (-4d) | 2018-05-29 14:15 → 2018-05-28 11:30 (-1d) |  |  | 1.18d → 2.25d |  |  |
| 25 | Tests de l'affichage de graphe | 2018-05-29 14:15 → 2018-05-28 11:30 (-1d) | 2018-05-29 16:35 → 2018-05-28 14:55 (-1d) |  |  | 1.18d → 2.25d |  |  |
| 26 | Implémentation de la modification des paramètres | 2018-05-29 16:35 → 2018-05-28 14:55 (-1d) | 2018-05-30 12:05 → 2018-05-29 11:25 (-1d) |  |  | 1.18d → 2.25d |  |  |
| 27 | Tests de la modification des paramètres | 2018-05-30 13:30 → 2018-05-29 11:25 (-1d) | 2018-05-30 14:30 → 2018-05-29 13:45 (-1d) |  |  | 1.18d → 2.25d |  |  |
| 28 | Modifications selon les tests client | 2018-05-30 14:30 → 2018-05-29 13:45 (-1d) | 2018-05-31 11:35 → 2018-05-30 08:15 (-1d) |  |  | 1.18d → 2.25d |  |  |
| 29 | Documentation de la réalisation | 2018-05-31 11:35 → 2018-05-30 08:15 (-1d) | 2018-06-04 11:20 → 2018-05-30 15:00 (-5d) |  |  | 1.18d → 2.25d |  |  |
| 30 | Documentation finale | 2018-06-04 11:20 → 2018-05-30 15:20 (-5d) | 2018-06-05 10:15 → 2018-05-31 15:50 (-5d) |  |  | 1.18d → 2.25d |  |  |

## Version 10 (saved 2018-05-23, file GHN_Planification_Continue.mpp)

Note of the change: Constants and history added

Last finish stays 2018-06-06.

Changed:

| ID | Task | Start | Finish | Duration | Complete | Total float |
| --- | --- | --- | --- | --- | --- | --- |
| 1 | **Totalité du projet** |  |  |  | 12% → 13% |  |
| 10 | **Implémentation & tests** |  | 2018-05-30 08:15 → 2018-05-28 11:00 (-2d) | 6d → 4.5d | 2% → 3% | 2.25d → 3.75d |
| 16 | Implémentation des calculs avancés |  | 2018-05-17 14:15 → 2018-05-17 16:35 | 0h → 2h |  | 2.25d → 3.75d |
| 17 | Tests des calculs avancés | 2018-05-17 14:15 → 2018-05-17 16:35 | 2018-05-17 14:15 → 2018-05-22 11:35 (+5d) | 0h → 3.5h |  | 2.25d → 3.75d |
| 18 | Implémentation de l'historique des opérations | 2018-05-17 14:15 → 2018-05-22 11:35 (+5d) | 2018-05-22 10:05 → 2018-05-22 11:35 | 4h → 0h |  | 2.25d → 3.75d |
| 19 | Tests de l'historique des opérations | 2018-05-22 10:05 → 2018-05-22 11:35 | 2018-05-22 12:05 → 2018-05-22 11:35 | 2h → 0h |  | 2.25d → 3.75d |
| 20 | Implémentation de l'utilisation des constantes | 2018-05-22 12:05 → 2018-05-22 11:35 | 2018-05-23 10:15 → 2018-05-22 11:35 (-1d) | 5h → 0h |  | 2.25d → 3.75d |
| 21 | Tests de l'utilisation des constantes | 2018-05-23 10:15 → 2018-05-22 11:35 (-1d) | 2018-05-23 11:15 → 2018-05-22 11:35 (-1d) | 1h → 0h |  | 2.25d → 3.75d |
| 22 | Implémentation de la conversion de base numérique | 2018-05-23 11:15 → 2018-05-22 11:35 (-1d) | 2018-05-23 16:00 → 2018-05-22 11:35 (-1d) | 3h → 0h |  | 2.25d → 3.75d |
| 23 | Tests de la conversion de base numérique | 2018-05-23 16:00 → 2018-05-22 11:35 (-1d) | 2018-05-24 10:45 → 2018-05-22 11:35 (-2d) | 1h → 0h |  | 2.25d → 3.75d |
| 24 | Implémentation de l'affichage d'un graphe | 2018-05-24 10:45 → 2018-05-22 11:35 (-2d) | 2018-05-28 11:30 → 2018-05-23 10:45 (-5d) |  |  | 2.25d → 3.75d |
| 25 | Tests de l'affichage de graphe | 2018-05-28 11:30 → 2018-05-23 10:45 (-5d) | 2018-05-28 14:55 → 2018-05-23 14:10 (-5d) |  |  | 2.25d → 3.75d |
| 26 | Implémentation de la modification des paramètres | 2018-05-28 14:55 → 2018-05-23 14:10 (-5d) | 2018-05-29 11:25 → 2018-05-24 13:40 (-5d) |  |  | 2.25d → 3.75d |
| 27 | Tests de la modification des paramètres | 2018-05-29 11:25 → 2018-05-24 13:40 (-5d) | 2018-05-29 13:45 → 2018-05-24 14:40 (-5d) |  |  | 2.25d → 3.75d |
| 28 | Modifications selon les tests client | 2018-05-29 13:45 → 2018-05-24 14:40 (-5d) | 2018-05-30 08:15 → 2018-05-28 11:00 (-2d) |  |  | 2.25d → 3.75d |
| 29 | Documentation de la réalisation | 2018-05-30 08:15 → 2018-05-28 11:00 (-2d) | 2018-05-30 15:00 → 2018-05-29 09:55 (-1d) |  |  | 2.25d → 3.75d |
| 30 | Documentation finale | 2018-05-30 15:20 → 2018-05-29 09:55 (-1d) | 2018-05-31 15:50 → 2018-05-29 16:35 (-2d) |  |  | 2.25d → 3.75d |

## Version 11 (saved 2018-05-24, file GHN_Planification_Continue.mpp)

Note of the change: Beta Version (no graph)

Last finish stays 2018-06-06.

Changed:

| ID | Task | Start | Finish | Duration |
| --- | --- | --- | --- | --- |
| 10 | **Implémentation & tests** |  | 2018-05-28 11:00 → 2018-05-29 08:05 (+1d) | 4.5d → 5d |
| 17 | Tests des calculs avancés |  | 2018-05-22 11:35 → 2018-05-22 13:40 | 3.5h → 4.25h |
| 18 | Implémentation de l'historique des opérations | 2018-05-22 11:35 → 2018-05-22 13:40 | 2018-05-22 11:35 → 2018-05-22 14:55 | 0h → 1.25h |
| 19 | Tests de l'historique des opérations | 2018-05-22 11:35 → 2018-05-22 14:55 | 2018-05-22 11:35 → 2018-05-22 15:45 | 0h → 0.5h |
| 20 | Implémentation de l'utilisation des constantes | 2018-05-22 11:35 → 2018-05-22 15:45 | 2018-05-22 11:35 → 2018-05-22 16:15 | 0h → 0.5h |
| 21 | Tests de l'utilisation des constantes | 2018-05-22 11:35 → 2018-05-22 16:15 | 2018-05-22 11:35 → 2018-05-22 16:30 | 0h → 0.25h |
| 22 | Implémentation de la conversion de base numérique | 2018-05-22 11:35 → 2018-05-22 16:30 | 2018-05-22 11:35 → 2018-05-23 08:55 (+1d) | 0h → 1.25h |
| 23 | Tests de la conversion de base numérique | 2018-05-22 11:35 → 2018-05-23 08:55 (+1d) | 2018-05-22 11:35 → 2018-05-23 09:10 (+1d) | 0h → 0.25h |
| 24 | Implémentation de l'affichage d'un graphe | 2018-05-22 11:35 → 2018-05-23 09:10 (+1d) | 2018-05-23 10:45 → 2018-05-24 11:00 (+1d) |  |
| 25 | Tests de l'affichage de graphe | 2018-05-23 10:45 → 2018-05-24 11:00 (+1d) | 2018-05-23 14:10 → 2018-05-24 14:25 (+1d) |  |
| 26 | Implémentation de la modification des paramètres | 2018-05-23 14:10 → 2018-05-24 14:25 (+1d) | 2018-05-24 13:40 → 2018-05-28 10:45 (+4d) | 4h → 3h |
| 27 | Tests de la modification des paramètres | 2018-05-24 13:40 → 2018-05-28 10:45 (+4d) | 2018-05-24 14:40 → 2018-05-28 11:30 (+4d) | 1h → 0.75h |
| 28 | Modifications selon les tests client | 2018-05-24 14:40 → 2018-05-28 11:30 (+4d) | 2018-05-28 11:00 → 2018-05-29 08:05 (+1d) |  |
| 29 | Documentation de la réalisation | 2018-05-28 11:00 → 2018-05-29 08:05 (+1d) |  | 5h → 1.5h |

## Version 12 (saved 2018-05-29, file GHN_Planification_Continue.mpp)

Note of the change: Graphs implemented

Last finish stays 2018-06-06.

Changed:

| ID | Task | Start | Finish | Duration | Complete | Total float |
| --- | --- | --- | --- | --- | --- | --- |
| 1 | **Totalité du projet** |  |  |  | 13% → 12% |  |
| 10 | **Implémentation & tests** |  | 2018-05-29 08:05 → 2018-05-29 09:20 | 5d → 5.18d |  | 3.75d → 3.57d |
| 12 | Implémentation de la base de données |  | 2018-05-16 10:35 → 2018-05-16 11:50 | 1h → 2.25h |  | 0.36d → -0.14d |
| 13 | Implémentation et tests de la saisie de l'utilisateur | 2018-05-16 10:35 → 2018-05-16 11:50 | 2018-05-16 11:05 → 2018-05-17 10:05 (+1d) | 0.5h → 2.75h |  | 0.29d → -0.14d |
| 14 | Implémentation de la classe de calcul avec des calculs simples |  | 2018-05-17 10:20 → 2018-05-17 11:50 |  |  | 2.25d → 3.68d |
| 15 | Tests de la classe de calcul | 2018-05-17 10:20 → 2018-05-17 11:50 | 2018-05-17 14:15 → 2018-05-17 16:05 |  |  | 0.96d → 3.68d |
| 16 | Implémentation des calculs avancés | 2018-05-17 14:15 → 2018-05-17 16:05 | 2018-05-17 16:35 → 2018-05-22 09:30 (+5d) | 2h → 2.25h |  | 3.75d → 3.68d |
| 17 | Tests des calculs avancés | 2018-05-17 16:35 → 2018-05-22 09:50 (+5d) | 2018-05-22 13:40 → 2018-05-22 15:45 |  |  | 3.75d → 3.68d |
| 18 | Implémentation de l'historique des opérations | 2018-05-22 13:40 → 2018-05-22 15:45 | 2018-05-22 14:55 → 2018-05-23 08:10 (+1d) |  |  | 3.75d → 3.68d |
| 19 | Tests de l'historique des opérations | 2018-05-22 14:55 → 2018-05-23 08:10 (+1d) | 2018-05-22 15:45 → 2018-05-23 08:40 (+1d) |  |  | 3.75d → 3.68d |
| 20 | Implémentation de l'utilisation des constantes | 2018-05-22 15:45 → 2018-05-23 08:40 (+1d) | 2018-05-22 16:15 → 2018-05-23 09:10 (+1d) |  |  | 3.75d → 3.68d |
| 21 | Tests de l'utilisation des constantes | 2018-05-22 16:15 → 2018-05-23 09:10 (+1d) | 2018-05-22 16:30 → 2018-05-23 09:25 (+1d) |  |  | 3.75d → 3.68d |
| 22 | Implémentation de la conversion de base numérique | 2018-05-22 16:30 → 2018-05-23 09:25 (+1d) | 2018-05-23 08:55 → 2018-05-23 11:00 |  |  | 3.75d → 3.68d |
| 23 | Tests de la conversion de base numérique | 2018-05-23 08:55 → 2018-05-23 11:00 | 2018-05-23 09:10 → 2018-05-23 11:15 |  |  | 3.75d → 3.68d |
| 24 | Implémentation de l'affichage d'un graphe | 2018-05-23 09:10 → 2018-05-23 11:15 | 2018-05-24 11:00 → 2018-05-24 14:55 | 6h → 6.75h |  | 3.75d → 3.57d |
| 25 | Tests de l'affichage de graphe | 2018-05-24 11:00 → 2018-05-24 14:55 | 2018-05-24 14:25 → 2018-05-24 16:00 | 2h → 0.75h |  | 3.75d → 3.57d |
| 26 | Implémentation de la modification des paramètres | 2018-05-24 14:25 → 2018-05-24 16:00 | 2018-05-28 10:45 → 2018-05-28 12:00 |  |  | 3.75d → 3.57d |
| 27 | Tests de la modification des paramètres | 2018-05-28 10:45 → 2018-05-28 12:00 | 2018-05-28 11:30 → 2018-05-28 14:10 |  |  | 3.75d → 3.57d |
| 28 | Modifications selon les tests client | 2018-05-28 11:30 → 2018-05-28 14:10 | 2018-05-29 08:05 → 2018-05-29 09:20 |  |  | 3.75d → 3.57d |
| 29 | Documentation de la réalisation | 2018-05-29 08:05 → 2018-05-29 09:20 | 2018-05-29 09:55 → 2018-05-29 11:10 |  |  | 3.75d → 3.57d |
| 30 | Documentation finale | 2018-05-29 09:55 → 2018-05-29 11:10 | 2018-05-29 16:35 → 2018-05-30 09:00 (+1d) |  |  | 3.75d → 3.57d |

## Version 13 (saved 2018-05-31, file GHN_Planification_Continue.mpp)

Note of the change: Code Freeze

Last finish stays 2018-06-06.

Changed:

| ID | Task | Start | Finish | Duration | Complete | Total float |
| --- | --- | --- | --- | --- | --- | --- |
| 10 | **Implémentation & tests** |  | 2018-05-29 09:20 → 2018-05-29 14:00 | 5.18d → 5.61d | 3% → 2% | 3.57d → 3.54d |
| 13 | Implémentation et tests de la saisie de l'utilisateur |  | 2018-05-17 10:05 → 2018-05-17 13:45 | 2.75h → 5h |  | -0.14d → 0d |
| 14 | Implémentation de la classe de calcul avec des calculs simples |  | 2018-05-17 11:50 → 2018-05-17 16:05 | 2.75h → 3h | 36% → 33% | 3.68d → 3.54d |
| 15 | Tests de la classe de calcul | 2018-05-17 11:50 → 2018-05-17 16:05 | 2018-05-17 16:05 → 2018-05-22 10:35 (+5d) | 2.5h → 3h |  | 3.68d → 3.54d |
| 16 | Implémentation des calculs avancés | 2018-05-17 16:05 → 2018-05-22 10:35 (+5d) | 2018-05-22 09:30 → 2018-05-22 14:10 |  |  | 3.68d → 3.54d |
| 17 | Tests des calculs avancés | 2018-05-22 09:50 → 2018-05-22 14:10 | 2018-05-22 15:45 → 2018-05-23 10:15 (+1d) |  |  | 3.68d → 3.54d |
| 18 | Implémentation de l'historique des opérations | 2018-05-22 15:45 → 2018-05-23 10:15 (+1d) | 2018-05-23 08:10 → 2018-05-23 11:30 |  |  | 3.68d → 3.54d |
| 19 | Tests de l'historique des opérations | 2018-05-23 08:10 → 2018-05-23 11:30 | 2018-05-23 08:40 → 2018-05-23 12:00 |  |  | 3.68d → 3.54d |
| 20 | Implémentation de l'utilisation des constantes | 2018-05-23 08:40 → 2018-05-23 12:00 | 2018-05-23 09:10 → 2018-05-23 13:55 |  |  | 3.68d → 3.54d |
| 21 | Tests de l'utilisation des constantes | 2018-05-23 09:10 → 2018-05-23 13:55 | 2018-05-23 09:25 → 2018-05-23 14:10 |  |  | 3.68d → 3.54d |
| 22 | Implémentation de la conversion de base numérique | 2018-05-23 09:25 → 2018-05-23 14:10 | 2018-05-23 11:00 → 2018-05-23 15:45 |  |  | 3.68d → 3.54d |
| 23 | Tests de la conversion de base numérique | 2018-05-23 11:00 → 2018-05-23 15:45 | 2018-05-23 11:15 → 2018-05-23 16:00 |  |  | 3.68d → 3.54d |
| 24 | Implémentation de l'affichage d'un graphe | 2018-05-23 11:15 → 2018-05-23 16:00 | 2018-05-24 14:55 → 2018-05-28 11:15 (+4d) |  |  | 3.57d → 3.54d |
| 25 | Tests de l'affichage de graphe | 2018-05-24 14:55 → 2018-05-28 11:15 (+4d) | 2018-05-24 16:00 → 2018-05-28 12:00 (+4d) |  |  | 3.57d → 3.54d |
| 26 | Implémentation de la modification des paramètres | 2018-05-24 16:00 → 2018-05-28 12:00 (+4d) | 2018-05-28 12:00 → 2018-05-29 08:35 (+1d) |  |  | 3.57d → 3.54d |
| 27 | Tests de la modification des paramètres | 2018-05-28 12:00 → 2018-05-29 08:35 (+1d) | 2018-05-28 14:10 → 2018-05-29 09:20 (+1d) |  |  | 3.57d → 3.54d |
| 28 | Modifications selon les tests client | 2018-05-28 14:10 → 2018-05-29 09:20 (+1d) | 2018-05-29 09:20 → 2018-05-29 14:00 |  |  | 3.57d → 3.54d |
| 29 | Documentation de la réalisation | 2018-05-29 09:20 → 2018-05-29 14:00 | 2018-05-29 11:10 → 2018-05-30 08:30 (+1d) | 1.5h → 3h |  | 3.57d → 3.54d |
| 30 | Documentation finale | 2018-05-29 11:10 → 2018-05-30 08:30 (+1d) | 2018-05-30 09:00 → 2018-05-30 09:15 | 5h → 0.75h |  | 3.57d → 3.54d |

## Version 14 (saved 2018-06-05, file GHN_Planification_Continue.mpp)

Note of the change: Final Commit

Last finish stays 2018-06-06. Complete tasks 4 → 2.

Added:

| ID | Task | Duration | Start | Finish | Predecessors |
| --- | --- | --- | --- | --- | --- |
| 31 | Préparation du rendu final | 6h | 2018-06-05 11:00 | 2018-06-06 10:10 | 30 |

Changed:

| ID | Task | Start | Finish | Duration | Complete | Total float |
| --- | --- | --- | --- | --- | --- | --- |
| 1 | **Totalité du projet** |  |  | 12.86d? → 90h | 12% → 11% | 0d → none |
| 3 | **Analyse** |  | 2018-05-14 15:25 → 2018-05-15 09:05 (+1d) | 1.96d → 15.5h | 83% → 75% | 10.61d → none |
| 6 | Création des scénarii |  | 2018-05-14 11:45 → 2018-05-14 12:00 | 5.75h → 6h | 70% → 67% | 10.89d → 0d |
| 7 | Création du Modèle Conceptuel de Données |  | 2018-05-14 11:00 A → 2018-05-14 14:25 | 1h → 2h | 100% → 50% | none → 0.11d |
| 8 | Création de Modèle Logique de Données |  | 2018-05-14 15:25 A → 2018-05-14 15:40 | 0.75h → 1h | 100% → 75% | none → 0.79d |
| 9 | Documentation de l'analyse |  | 2018-05-15 15:50 → 2018-05-15 16:05 | 5.25h → 5.5h | 86% → 82% | -0.14d → -0.07d |
| 10 | **Implémentation & tests** | 2018-05-15 15:50 A → 2018-05-15 16:05 A | 2018-05-29 14:00 → 2018-05-31 13:45 (+2d) | 5.61d → 50h |  | 3.54d → none |
| 11 | Implémentation des classes et des méthodes vides | 2018-05-15 15:50 → 2018-05-15 16:05 | 2018-05-16 09:15 → 2018-05-16 10:35 | 2.25h → 3h |  | -0.14d → 0d |
| 12 | Implémentation de la base de données | 2018-05-16 09:15 → 2018-05-16 10:35 | 2018-05-16 11:50 → 2018-05-16 15:00 | 2.25h → 3h |  | -0.14d → 0d |
| 13 | Implémentation et tests de la saisie de l'utilisateur | 2018-05-16 11:50 → 2018-05-16 15:20 | 2018-05-17 13:45 → 2018-05-17 15:50 |  |  |  |
| 14 | Implémentation de la classe de calcul avec des calculs simples | 2018-05-16 13:30 A → 2018-05-17 09:00 A (+1d) | 2018-05-17 16:05 → 2018-05-22 10:20 (+5d) | 3h → 4h | 33% → 25% | 3.54d → 0.21d |
| 15 | Tests de la classe de calcul | 2018-05-17 16:05 → 2018-05-22 10:20 (+5d) | 2018-05-22 10:35 → 2018-05-22 14:40 |  |  | 3.54d → 0.21d |
| 16 | Implémentation des calculs avancés | 2018-05-22 10:35 → 2018-05-22 14:40 | 2018-05-22 14:10 → 2018-05-23 09:10 (+1d) | 2.25h → 3h |  | 3.54d → 0.21d |
| 17 | Tests des calculs avancés | 2018-05-22 14:10 → 2018-05-23 09:10 (+1d) | 2018-05-23 10:15 → 2018-05-24 10:00 (+1d) | 4.25h → 5h |  | 3.54d → 0.21d |
| 18 | Implémentation de l'historique des opérations | 2018-05-23 10:15 → 2018-05-24 10:00 (+1d) | 2018-05-23 11:30 → 2018-05-24 12:00 (+1d) | 1.25h → 2h |  | 3.54d → 0.21d |
| 19 | Tests de l'historique des opérations | 2018-05-23 11:30 → 2018-05-24 12:00 (+1d) | 2018-05-23 12:00 → 2018-05-24 14:25 (+1d) | 0.5h → 1h |  | 3.54d → 0.21d |
| 20 | Implémentation de l'utilisation des constantes | 2018-05-23 12:00 → 2018-05-24 14:25 (+1d) | 2018-05-23 13:55 → 2018-05-24 15:45 (+1d) | 0.5h → 1h |  | 3.54d → 0.21d |
| 21 | Tests de l'utilisation des constantes | 2018-05-23 13:55 → 2018-05-24 15:45 (+1d) | 2018-05-23 14:10 → 2018-05-24 16:15 (+1d) | 0.25h → 0.5h |  | 3.54d → 0.21d |
| 22 | Implémentation de la conversion de base numérique | 2018-05-23 14:10 → 2018-05-24 16:15 (+1d) | 2018-05-23 15:45 → 2018-05-28 11:15 (+5d) | 1.25h → 2h |  | 3.54d → 0.21d |
| 23 | Tests de la conversion de base numérique | 2018-05-23 15:45 → 2018-05-28 11:15 (+5d) | 2018-05-23 16:00 → 2018-05-28 11:45 (+5d) | 0.25h → 0.5h |  | 3.54d → 0.21d |
| 24 | Implémentation de l'affichage d'un graphe | 2018-05-23 16:00 → 2018-05-28 11:45 (+5d) | 2018-05-28 11:15 → 2018-05-29 14:00 (+1d) | 6.75h → 7h |  | 3.54d → 0.21d |
| 25 | Tests de l'affichage de graphe | 2018-05-28 11:15 → 2018-05-29 14:00 (+1d) | 2018-05-28 12:00 → 2018-05-29 16:20 (+1d) | 0.75h → 2h |  | 3.54d → 0.21d |
| 26 | Implémentation de la modification des paramètres | 2018-05-28 12:00 → 2018-05-29 16:20 (+1d) | 2018-05-29 08:35 → 2018-05-30 11:50 (+1d) | 3h → 4h |  | 3.54d → 0.21d |
| 27 | Tests de la modification des paramètres | 2018-05-29 08:35 → 2018-05-30 11:50 (+1d) | 2018-05-29 09:20 → 2018-05-30 14:15 (+1d) | 0.75h → 1h |  | 3.54d → 0.21d |
| 28 | Modifications selon les tests client | 2018-05-29 09:20 → 2018-05-30 14:15 (+1d) | 2018-05-29 14:00 → 2018-05-31 11:20 (+2d) |  |  | 3.54d → 0.21d |
| 29 | Documentation de la réalisation | 2018-05-29 14:00 → 2018-05-31 11:20 (+2d) | 2018-05-30 08:30 → 2018-06-04 10:05 (+5d) | 3h → 4h |  | 3.54d → 0.21d |
| 30 | Documentation finale | 2018-05-30 08:30 → 2018-06-04 10:05 (+5d) | 2018-05-30 09:15 → 2018-06-05 11:00 (+6d) | 0.75h → 7h |  | 3.54d → 0.21d |
